# Visualización ampliada de edificios

Schedule from ProjectLibre, 2016-12-08 to 2017-06-22, 6 hours a day.

## Calendars

- Estandar: Mon off; Tue 16:30-21:00; Wed off; Thu 16:30-21:00; Fri-Sat off; Sun 10:00-14:00, 16:00-21:00. Exceptions (off unless hours are given): 2017-02-26.

## Resources

| Resource |
| --- |
| No Asignado |
| Roi |
| RoiI |

## Schedule

| ID | WBS | Task | Duration | Start | Finish | Predecessors | Baseline start | Baseline finish | Total slack | Constraint | Resources |
| --- | --- | --- | --- | --- | --- | --- | --- | --- | --- | --- | --- |
| 1 | 1 | **Proyecto** | 82.25d? | 2016-12-08 | 2017-06-22 |  | 2016-12-06 | 2017-08-01 |  |  |  |
| 2 | 1.1 | **Gestión del proyecto** | 73.92d? | 2016-12-08 | 2017-06-04 |  | 2016-12-06 | 2016-12-18 | -6177.78d |  |  |
| 3 | 1.1.1 | Gestión del alcance | 0.83d? | 2017-05-21 | 2017-05-23 |  | 2016-12-06 | 2016-12-08 | -6300d |  | Roi |
| 4 | 1.1.2 | Eleccion ciclo de vida | 0.08d? | 2016-12-08 | 2016-12-08 | 3 | 2016-12-08 | 2016-12-08 | 2933.33d |  | Roi |
| 5 | 1.1.3 | Gestión del tiempo | 0.83d? | 2017-05-21 | 2017-05-23 | 4 | 2016-12-08 | 2016-12-11 | -6177.78d |  | Roi |
| 6 | 1.1.4 | Gestión de los costes | 1.33d? | 2017-05-23 | 2017-05-25 | 5 | 2016-12-11 | 2016-12-13 | -6177.78d |  | Roi [50%] |
| 7 | 1.1.5 | Gestión de la configuración | 1.67d? | 2017-05-25 | 2017-05-30 | 6 | 2016-12-13 | 2016-12-15 | -6177.78d |  | Roi [50%] |
| 8 | 1.1.6 | Gestion de riesgos | 1.67d? | 2017-05-30 | 2017-06-04 | 7 | 2016-12-15 | 2016-12-18 | -6177.78d |  | Roi [50%] |
| 9 | 1.2 | **Análisis del sistema y requisitos** | 7.33d? | 2017-05-23 | 2017-06-08 | 5 | 2016-12-11 | 2016-12-22 | -6177.78d |  |  |
| 10 | 1.2.1 | Casos Uso | 1.5d? | 2017-05-23 | 2017-05-28 |  | 2016-12-11 | 2016-12-18 | -5400d |  | Roi [50%] |
| 11 | 1.2.2 | Analisis requisitos | 1d? | 2017-06-04 | 2017-06-04 | 8 | 2016-12-18 | 2016-12-20 | -6177.78d |  | Roi |
| 12 | 1.2.3 | Especificación CU y REQ | 1.67d? | 2017-06-04 | 2017-06-08 | 11 | 2016-12-20 | 2016-12-22 | -6177.78d |  | Roi |
| 13 | 1.3 | **Incremento1: Análisis de tecnologías** | 7.67d? | 2016-12-22 | 2017-01-10 | 9 | 2016-12-22 | 2017-01-10 | 3222.22d |  |  |
| 14 | 1.3.1 | Estudio de tecnologías disponibles | 1.33d? | 2016-12-22 | 2016-12-25 |  | 2016-12-22 | 2016-12-25 | 3222.22d |  | Roi |
| 15 | 1.3.2 | **Pruebas** | 6d? | 2016-12-25 | 2017-01-08 | 14 | 2016-12-25 | 2017-01-08 | 3222.22d |  |  |
| 16 | 1.3.2.1 | IMU | 2d? | 2016-12-25 | 2017-01-01 |  | 2016-12-25 | 2017-01-01 | 3222.22d |  | Roi |
| 17 | 1.3.2.2 | ARToolkit Sdk | 2d? | 2017-01-01 | 2017-01-03 | 16 | 2017-01-01 | 2017-01-03 | 3222.22d |  | Roi |
| 18 | 1.3.2.3 | Vuforia Sdk | 2d? | 2017-01-05 | 2017-01-08 | 17 | 2017-01-05 | 2017-01-08 | 3222.22d |  | Roi |
| 19 | 1.3.3 | Elección de tecnología | 0.33d? | 2017-01-08 | 2017-01-10 | 15 | 2017-01-08 | 2017-01-10 | 3222.22d |  | Roi |
| 20 | 1.4 | **Incremento 2: Sistema de ubicación** | 19d? | 2017-01-10 | 2017-02-23 | 13 | 2017-01-10 | 2017-04-13 | 3222.22d |  |  |
| 21 | 1.4.1 | Configurar proyecto | 0.67d? | 2017-01-10 | 2017-01-10 |  | 2017-01-10 | 2017-01-10 | 3222.22d |  | Roi |
| 22 | 1.4.2 | RF04: Ubicar y orientar dispositivo | 15.5d? | 2017-01-12 | 2017-02-16 | 21 | 2017-03-01 | 2017-04-06 | 3222.22d |  | Roi |
| 23 | 1.4.3 | RF05: Seleccionar despacho | 2.83d | 2017-02-16 | 2017-02-23 | 22 | 2017-04-06 | 2017-04-09 | 3222.22d |  | Roi |
| 24 | 1.5 | **Incremento3: Subsistema de dibujado** | 13.5d? | 2017-04-23 | 2017-05-22 | 20 | 2017-05-09 | 2017-06-11 | 100d |  |  |
| 25 | 1.5.1 | RF01: Dibujar entorno AR | 7d? | 2017-04-23 | 2017-05-07 |  | 2017-05-09 | 2017-05-28 | 166.67d | start no earlier than 2017-04-23 | Roi |
| 26 | 1.5.2 | RF02: Dibujar elementos climatización | 10d? | 2017-05-07 | 2017-05-19 | 25 | 2017-05-28 | 2017-06-04 | 200d |  | RoiI |
| 27 | 1.5.3 | RF03: Configurar obj virt visibles en AR | 2d? | 2017-05-21 | 2017-05-22 | 26 | 2017-06-04 | 2017-06-11 | 100d |  | RoiI |

| ID | WBS | Task | Duration | Start | Finish | Predecessors | Baseline start | Baseline finish | Total slack | Resources |
| --- | --- | --- | --- | --- | --- | --- | --- | --- | --- | --- |
| 28 | 1.6 | **Incremento4: Subsistema despachos virtuales** | 12.33d? | 2017-05-25 | 2017-06-22 | 24 | 2017-06-11 | 2017-06-29 |  |  |
| 29 | 1.6.1 | RF06: Editar despacho | 9d? | 2017-05-25 | 2017-06-13 |  | 2017-06-11 | 2017-06-13 |  | Roi [50%] |
| 30 | 1.6.2 | RF07: Crear despacho | 2d? | 2017-06-18 | 2017-06-22 | 31 | 2017-06-13 | 2017-06-25 |  | RoiI |
| 31 | 1.6.3 | RF08: Eliminar despacho | 1.33d? | 2017-06-15 | 2017-06-18 | 29 | 2017-06-25 | 2017-06-27 |  | RoiI |
| 32 | 1.7 | **Incremento 5: Elementos virtuales** | 3.75d? | 2017-05-25 | 2017-06-03 | 24 | 2017-06-29 | 2017-08-01 | 1144.44d |  |
| 33 | 1.7.1 | RF09: Editar elemento virtual | 2.5d? | 2017-05-25 | 2017-05-27 |  | 2017-06-29 | 2017-07-09 | 800d | RoiI |
| 34 | 1.7.2 | RF10: Listar elementos virtuales | 1.83d? | 2017-05-28 | 2017-05-29 | 33 | 2017-07-09 | 2017-07-13 | 722.22d | RoiI |
| 35 | 1.7.3 | RF11: Actualizar elemento climatizacion WebRest | 4.67d? | 2017-05-30 | 2017-06-03 | 34 | 2017-07-13 | 2017-07-30 | 1144.44d | RoiI |
